# 校准系统_第一阶段_进度计划

Schedule from MS Project, 2020-06-08 to 2020-06-18.

## Calendars

- 标准: Mon-Fri 08:00-12:00, 13:00-17:00; Sat-Sun off.

## Resources

| Resource |
| --- |
| 罗志勇 |
| 彭明东 |

## Schedule

| ID | WBS | Task | Duration | Start | Finish | Predecessors | Total slack | Free slack | Constraint | Resources | Work |
| --- | --- | --- | --- | --- | --- | --- | --- | --- | --- | --- | --- |
| 2 | 1 | **总体设计文档编写** | 9d | 2020-06-08 | 2020-06-18 |  | 0d |  |  |  | 112h |
| 3 | 1.1 | **核心业务部分设计文档** | 5d | 2020-06-08 | 2020-06-12 |  | 4d |  |  |  | 80h |
| 4 | 1.1.1 | 日志模块设计文档 | 1d | 2020-06-08 | 2020-06-08 |  | 5d | 0d | start no earlier than 2020-06-08 | 罗志勇 | 8h |
| 5 | 1.1.2 | 序列号管理设计文档 | 1d | 2020-06-09 | 2020-06-09 | 4 | 5d | 0d | start no earlier than 2020-06-09 | 罗志勇 | 8h |
| 6 | 1.1.3 | 模块自识别、硬件调试子业务设计文档 | 1d | 2020-06-10 | 2020-06-10 | 5 | 5d | 0d | start no earlier than 2020-06-10 | 罗志勇 | 8h |
| 7 | 1.1.4 | 校准命令、标准结果返回命令规范文档 | 1d | 2020-06-11 | 2020-06-11 | 6 | 5d |  | start no earlier than 2020-06-11 | 罗志勇 | 8h |
| 8 | 1.1.5 | 用户管理设计文档 | 1d | 2020-06-12 | 2020-06-12 |  | 4d |  | start no earlier than 2020-06-12 | 罗志勇 | 8h |
| 9 | 1.1.6 | 校准、采集子业务设计文档 | 1d | 2020-06-08 | 2020-06-08 |  | 4d | 0d | start no earlier than 2020-06-08 | 彭明东 | 8h |
| 10 | 1.1.7 | 结果判定子业务设计文档 | 1d | 2020-06-09 | 2020-06-09 | 9 | 4d | 0d | start no earlier than 2020-06-09 | 彭明东 | 8h |
| 11 | 1.1.8 | 协议对接业务设计文档 | 1d | 2020-06-10 | 2020-06-10 | 10 | 4d | 0d | start no earlier than 2020-06-10 | 彭明东 | 8h |
| 12 | 1.1.9 | 标准源控制、参数管理子业务设计文档 | 1d | 2020-06-11 | 2020-06-11 | 11 | 4d | 0d | start no earlier than 2020-06-11 | 彭明东 | 8h |
| 13 | 1.1.10 | 界面逻辑、通讯业务设计文档 | 1d | 2020-06-12 | 2020-06-12 | 12 | 4d |  | start no earlier than 2020-06-12 | 彭明东 | 8h |
| 14 | 1.2 | **设计文档完善与确认** | 4d | 2020-06-15 | 2020-06-18 |  | 0d |  |  |  | 32h |
| 15 | 1.2.1 | 非功能特性说明编写 | 1d | 2020-06-15 | 2020-06-15 |  | 0d |  | start no earlier than 2020-06-15 | 彭明东 | 8h |
| 16 | 1.2.2 | 总体约束说明编写 | 1d | 2020-06-16 | 2020-06-16 | 15 | 0d |  | start no earlier than 2020-06-16 | 彭明东 | 8h |
| 17 | 1.2.3 | 文档检查与修改 | 1d | 2020-06-17 | 2020-06-17 | 16 | 0d |  | start no earlier than 2020-06-17 | 彭明东 | 8h |
| 18 | 1.2.4 | 总体设计文档完善与归档 | 1d | 2020-06-18 | 2020-06-18 | 17 | 0d |  | start no earlier than 2020-06-18 | 彭明东 | 8h |
| 20 | 2 | **UI界面** | 4d | 2020-06-15 | 2020-06-18 |  | 0d |  |  |  | 32h |
| 21 | 2.1 | 主界面原型开发与设计 | 1d | 2020-06-15 | 2020-06-15 |  | 0d |  | start no earlier than 2020-06-15 | 罗志勇 | 8h |
| 22 | 2.2 | 用户登陆与管理界面开发 | 1d | 2020-06-16 | 2020-06-16 | 21 | 0d |  | start no earlier than 2020-06-16 | 罗志勇 | 8h |
| 23 | 2.3 | 校准操作界面、状态显示界面开发 | 1d | 2020-06-17 | 2020-06-17 | 22 | 0d |  | start no earlier than 2020-06-17 | 罗志勇 | 8h |
| 24 | 2.4 | 日志管理界面设计与开发 | 1d | 2020-06-18 | 2020-06-18 | 23 | 0d |  | start no earlier than 2020-06-18 | 罗志勇 | 8h |
